# 基于panda3D游戏引擎的第三人称设射击游戏进度安排

Schedule from MS Project, 2017-06-05 to 2017-07-15, A marks actual dates.
Win10NeT.COM

## Calendars

- 标准: Mon-Fri 08:00-12:00, 13:00-17:00; Sat-Sun off.

## Resources

| Resource |
| --- |
| 全体人员 |
| 林旭南 |
| 甘寿枢 |
| 刘晓安 |
| 张文博 |
| 麦建成 |
| 宋丹 |
| 张志斌 |
| 全体编码人员 |
| 苏时元 |
| 陈红宇 |

## Schedule

| ID | WBS | Task | Type | Duration | Start | Finish | Complete | Remaining | Total slack | Resources | Work | Actual work |
| --- | --- | --- | --- | --- | --- | --- | --- | --- | --- | --- | --- | --- |
| 1 | 1 | **1 启动** |  | 1d | 2017-06-05 A | 2017-06-05 A | 100% |  |  | 全体人员 | 24h | 24h |
| 2 | 1.1 | 1.1 组建项目组 | manual | 1d | 2017-06-05 A | 2017-06-05 A | 100% |  |  | 全体人员 | 8h | 8h |
| 3 | 1.2 | 1.2 召开项目启动会议 | manual | 1d | 2017-06-05 A | 2017-06-05 A | 100% |  |  | 全体人员 | 8h | 8h |
| 4 | 2 | **2 计划** |  | 3d | 2017-06-05 A | 2017-06-07 A | 100% |  |  |  | 40h | 40h |
| 5 | 2.1 | 2.1 确定游戏 | manual | 1d | 2017-06-05 A | 2017-06-05 A | 100% |  |  | 全体人员 | 8h | 8h |
| 6 | 2.2 | **2.2 完成项目计划表** |  | 2d | 2017-06-06 A | 2017-06-07 A | 100% |  |  | 林旭南 | 32h | 32h |
| 7 | 2.2.1 | 2.2.1 完成粗粒度项目计划表 | manual | 1d | 2017-06-06 A | 2017-06-06 A | 100% |  |  | 林旭南 | 8h | 8h |
| 8 | 2.2.2 | 2.2.2 完成细粒度项目计划表 | manual | 1d | 2017-06-07 A | 2017-06-07 A | 100% |  |  | 林旭南 | 8h | 8h |
| 9 | 3 | **3 实施** |  | 26d | 2017-06-07 A | 2017-07-12 | 3% | 25.16d | 0d |  | 1376h | 25.6h |
| 10 | 3.1 | **3.1 完成需求文档** |  | 2d | 2017-06-08 A | 2017-06-10 | 1% | 1.98d | 0d |  | 80h | 0.8h |
| 11 | 3.1.1 | 3.1.1 需求文档概述 | manual | 1d | 2017-06-08 A | 2017-06-08 | 10% | 0.9d |  | 张志斌 | 8h | 0.8h |
| 12 | 3.1.2 | **3.1.2 系统功能需求** |  | 2d | 2017-06-08 | 2017-06-09 |  |  | 0d |  | 56h |  |
| 13 | 3.1.2.1 | 3.1.2.1 系统功能架构 | manual | 1d | 2017-06-08 | 2017-06-08 |  |  |  |  |  |  |
| 14 | 3.1.2.2 | 3.1.2.1.1 系统功能架构 | manual | 1d | 2017-06-08 | 2017-06-08 |  |  |  | 甘寿枢 | 8h |  |
| 15 | 3.1.2.3 | 3.1.2.1.2 系统功能架构 | manual | 1d | 2017-06-08 | 2017-06-08 |  |  |  | 陈红宇 | 8h |  |
| 16 | 3.1.2.4 | 3.1.2.2 开场动画功能需求 | manual | 1d | 2017-06-08 | 2017-06-08 |  |  |  | 刘晓安 | 8h |  |
| 17 | 3.1.2.5 | 3.1.2.3 第一关功能需求 | manual | 1d | 2017-06-08 | 2017-06-08 |  |  |  | 张文博 | 8h |  |
| 18 | 3.1.2.6 | 3.1.2.4 过场动画功能需求 | manual | 1d | 2017-06-09 | 2017-06-09 |  |  |  | 刘晓安 | 8h |  |
| 19 | 3.1.2.7 | 3.1.2.5 第二关功能需求 | manual | 1d | 2017-06-09 | 2017-06-09 |  |  |  | 张文博 | 8h |  |
| 20 | 3.1.2.8 | 3.1.2.6 boss关卡功能需求 | manual | 1d | 2017-06-09 | 2017-06-09 |  |  |  | 麦建成 | 8h |  |
| 21 | 3.1.3 | 3.1.3 系统非功能性需求 | manual | 1d | 2017-06-09 | 2017-06-09 |  |  |  | 宋丹 | 8h |  |
| 22 | 3.1.4 | 3.1.4 需求文档整合 | manual | 1d | 2017-06-10 | 2017-06-10 |  |  |  | 张志斌 | 8h |  |
| 23 | 3.2 | **3.2 完成游戏策划** |  | 2d | 2017-06-07 A | 2017-06-08 | 44% | 1.11d | 0d |  | 56h | 24.8h |
| 24 | 3.2.1 | 3.2.1 完成游戏规则制定 | manual | 1d | 2017-06-07 A | 2017-06-07 | 80% | 0.2d |  | 麦建成 | 8h | 6.4h |
| 25 | 3.2.2 | 3.2.2 完成游戏场景设计 | manual | 1d | 2017-06-07 A | 2017-06-07 | 80% | 0.2d |  | 张文博 | 8h | 6.4h |
| 26 | 3.2.3 | 3.2.3 完成游戏故事背景 | manual | 1d | 2017-06-07 A | 2017-06-07 A | 100% |  |  | 刘晓安 | 8h | 8h |
| 27 | 3.2.4 | 3.2.4 完成过场动画设计 | manual | 1d | 2017-06-07 | 2017-06-07 |  |  |  | 张文博 | 8h |  |
| 28 | 3.2.5 | 3.2.5 完成角色(怪物、主角、boss)设计 | manual | 1d | 2017-06-08 | 2017-06-08 |  |  |  | 刘晓安 | 8h |  |
| 29 | 3.2.6 | 3.2.6 完成设备使用交互设计 | manual | 1d | 2017-06-08 A | 2017-06-08 | 50% | 0.5d |  | 麦建成 | 8h | 4h |
| 30 | 3.2.7 | 3.2.7 绘制游戏场景草图 | manual | 1d | 2017-06-08 | 2017-06-08 |  |  |  | 张文博 | 8h |  |

| ID | WBS | Task | Type | Duration | Start | Finish | Total slack | Resources | Work |
| --- | --- | --- | --- | --- | --- | --- | --- | --- | --- |
| 31 | 3.3 | **3.3 完成美工设计** |  | 13d | 2017-06-12 | 2017-06-28 | 0d |  | 912h |
| 32 | 3.3.1 | **3.3.1 游戏场景设计** |  | 8d | 2017-06-12 | 2017-06-21 | 0d | 张文博 | 200h |
| 33 | 3.3.1.1 | **3.3.1.1 游戏场景初步设计** |  | 4d | 2017-06-12 | 2017-06-15 | 0d | 张文博 | 64h |
| 34 | 3.3.1.1.1 | 3.3.1.1.1 游戏场景初步设计1 | manual | 1d | 2017-06-12 | 2017-06-12 |  | 张文博 | 8h |
| 35 | 3.3.1.1.2 | 3.3.1.1.2 游戏场景初步设计2 | manual | 1d | 2017-06-13 | 2017-06-13 |  | 张文博 | 8h |
| 36 | 3.3.1.1.3 | 3.3.1.1.3 游戏场景初步设计3 | manual | 1d | 2017-06-14 | 2017-06-14 |  | 张文博 | 8h |
| 37 | 3.3.1.1.4 | 3.3.1.1.4 游戏场景初步设计4 | manual | 1d | 2017-06-15 | 2017-06-15 |  | 张文博 | 8h |
| 38 | 3.3.1.2 | **3.3.1.2 游戏场景美化** |  | 4d | 2017-06-16 | 2017-06-21 | 0d | 张文博 | 72h |
| 39 | 3.3.1.2.1 | 3.3.1.2.1 游戏场景美化1 | manual | 1d | 2017-06-16 | 2017-06-16 |  | 张文博 | 8h |
| 40 | 3.3.1.2.2 | 3.3.1.2.2 游戏场景美化2 | manual | 1d | 2017-06-17 | 2017-06-17 |  | 张文博 | 8h |
| 41 | 3.3.1.2.3 | 3.3.1.2.3 游戏场景美化3 | manual | 1d | 2017-06-19 | 2017-06-19 |  | 张文博 | 8h |
| 42 | 3.3.1.2.4 | 3.3.1.2.4 游戏场景美化4 | manual | 1d | 2017-06-20 | 2017-06-20 |  | 张文博 | 8h |
| 43 | 3.3.1.2.5 | 3.3.1.2.5 游戏场景美化5 | manual | 1d | 2017-06-21 | 2017-06-21 |  | 张文博 | 8h |
| 44 | 3.3.2 | **3.3.2 游戏模型设计** |  | 13d | 2017-06-12 | 2017-06-28 | 0d | 麦建成 | 496h |
| 45 | 3.3.2.1 | **3.3.2.1 模型初步设计** |  | 9d | 2017-06-12 | 2017-06-22 | 0d | 麦建成 | 288h |
| 46 | 3.3.2.1.1 | **3.3.2.1.1 主角物理模型初步设计** |  | 3d | 2017-06-12 | 2017-06-14 | 0d | 麦建成 | 48h |
| 47 | 3.3.2.1.1.1 | 3.3.2.1.1.1 主角物理模型初步设计1 | manual | 1d | 2017-06-12 | 2017-06-12 |  | 麦建成 | 8h |
| 48 | 3.3.2.1.1.2 | 3.3.2.1.1.2 主角物理模型初步设计2 | manual | 1d | 2017-06-13 | 2017-06-13 |  | 麦建成 | 8h |
| 49 | 3.3.2.1.1.3 | 3.3.2.1.1.3 主角动作设计 | manual | 1d | 2017-06-14 | 2017-06-14 |  | 麦建成 | 8h |
| 50 | 3.3.2.1.2 | **3.3.2.1.2 怪物模型初步设计** |  | 6d | 2017-06-15 | 2017-06-22 | 0d | 麦建成 | 168h |
| 51 | 3.3.2.1.2.1 | **3.3.2.1.2.1 地面怪物模型初步设计** |  | 2d | 2017-06-15 | 2017-06-16 | 0d | 麦建成 | 32h |
| 52 | 3.3.2.1.2.1.1 | 3.3.2.1.2.1.1 地面怪物初步物理模型设计 | manual | 1d | 2017-06-15 | 2017-06-15 |  | 麦建成 | 8h |
| 53 | 3.3.2.1.2.1.2 | 3.3.2.1.2.1.2 地面怪物动作设计 | manual | 1d | 2017-06-16 | 2017-06-16 |  | 麦建成 | 8h |
| 54 | 3.3.2.1.2.2 | **3.3.2.1.2.2 飞行怪物初步模型设计** |  | 1d | 2017-06-17 | 2017-06-19 | 0d | 麦建成 | 24h |
| 55 | 3.3.2.1.2.2.1 | 3.3.2.1.2.2.1 飞行怪物初步物理模型设计 | manual | 1d | 2017-06-17 | 2017-06-17 |  | 麦建成 | 8h |
| 56 | 3.3.2.1.2.2.2 | 3.3.2.1.2.2.2 飞行怪物动作设计 | manual | 1d | 2017-06-19 | 2017-06-19 |  | 麦建成 | 8h |

| ID | WBS | Task | Type | Duration | Start | Finish | Total slack | Resources | Work |
| --- | --- | --- | --- | --- | --- | --- | --- | --- | --- |
| 57 | 3.3.2.1.2.3 | **3.3.2.1.2.3 BOSS怪物初步模型设计** |  | 3d | 2017-06-20 | 2017-06-22 | 0d | 麦建成 | 64h |
| 58 | 3.3.2.1.2.3.1 | **3.3.2.1.2.3.1 BOSS怪物初步物理模型设计** |  | 2d | 2017-06-20 | 2017-06-21 | 0d | 麦建成 | 32h |
| 59 | 3.3.2.1.2.3.1.1 | 3.3.2.1.2.3.1.1 BOSS怪物1初步物理模型设计 | manual | 1d | 2017-06-20 | 2017-06-20 |  | 麦建成 | 8h |
| 60 | 3.3.2.1.2.3.1.2 | 3.3.2.1.2.3.1.2 BOSS怪物2初步物理模型设计 | manual | 1d | 2017-06-21 | 2017-06-21 |  | 麦建成 | 8h |
| 61 | 3.3.2.1.2.3.2 | 3.3.2.1.2.3.2 BOSS怪物动作设计 | manual | 1d | 2017-06-22 | 2017-06-22 |  | 麦建成 | 8h |
| 62 | 3.3.2.2 | **3.3.2.2 模型美化** |  | 4d | 2017-06-23 | 2017-06-28 | 0d | 麦建成 | 104h |
| 63 | 3.3.2.2.1 | **3.3.2.2.1 主角模型美化** |  | 1d | 2017-06-23 | 2017-06-24 | 0d | 麦建成 | 24h |
| 64 | 3.3.2.2.1.1 | 3.3.2.2.1.1 主角模型美化1 | manual | 1d | 2017-06-23 | 2017-06-23 |  | 麦建成 | 8h |
| 65 | 3.3.2.2.1.2 | 3.3.2.2.1.2 主角模型美化2 | manual | 1d | 2017-06-24 | 2017-06-24 |  | 麦建成 | 8h |
| 66 | 3.3.2.2.2 | **3.3.2.2.2 怪物模型美化** |  | 3d | 2017-06-26 | 2017-06-28 | 0d | 麦建成 | 48h |
| 67 | 3.3.2.2.2.1 | 3.3.2.2.2.1 地面怪物美化 | manual | 1d | 2017-06-26 | 2017-06-26 |  | 麦建成 | 8h |
| 68 | 3.3.2.2.2.2 | 3.3.2.2.2.2 飞行怪物美化 | manual | 1d | 2017-06-27 | 2017-06-27 |  | 麦建成 | 8h |
| 69 | 3.3.2.2.2.3 | 3.3.2.2.2.3 BOSS怪物美化 | manual | 1d | 2017-06-28 | 2017-06-28 |  | 麦建成 | 8h |
| 70 | 3.3.3 | **3.3.3 道具设计** |  | 2d | 2017-06-12 | 2017-06-13 | 0d | 刘晓安 | 32h |
| 71 | 3.3.3.1 | 3.3.3.1 道具模型初步设计 | manual | 1d | 2017-06-12 | 2017-06-12 |  | 刘晓安 | 8h |
| 72 | 3.3.3.2 | 3.3.3.2 道具模型美化 | manual | 1d | 2017-06-13 | 2017-06-13 |  | 刘晓安 | 8h |
| 73 | 3.3.4 | **3.3.4 动画设计** |  | 3d | 2017-06-14 | 2017-06-17 | 0d | 刘晓安 | 80h |
| 74 | 3.3.4.1 | **3.3.4.1 开场动画设计** |  | 2d | 2017-06-14 | 2017-06-15 | 0d | 刘晓安 | 32h |
| 75 | 3.3.4.1.1 | 3.3.4.1.1 开场动画设计1 | manual | 1d | 2017-06-14 | 2017-06-14 |  | 刘晓安 | 8h |
| 76 | 3.3.4.1.2 | 3.3.4.1.2 开场动画设计2 | manual | 1d | 2017-06-15 | 2017-06-15 |  | 刘晓安 | 8h |
| 77 | 3.3.4.2 | 3.3.4.2 过场动画1设计 | manual | 2d | 2017-06-16 | 2017-06-17 |  | 刘晓安 | 16h |
| 78 | 3.3.4.3 | 3.3.4.3 过场动画2设计 | manual | 1d | 2017-06-17 | 2017-06-17 |  | 刘晓安 | 8h |
| 79 | 3.3.5 | **3.3.5 音效设计** |  | 2d | 2017-06-19 | 2017-06-20 | 0d | 刘晓安 | 72h |
| 80 | 3.3.5.1 | 3.3.5.1 射击音效 | manual | 1d | 2017-06-19 | 2017-06-19 |  | 刘晓安 | 8h |
| 81 | 3.3.5.2 | 3.3.5.2 受伤音效 | manual | 1d | 2017-06-19 | 2017-06-19 |  | 刘晓安 | 8h |
| 82 | 3.3.5.3 | 3.3.5.3 门开关音效 | manual | 1d | 2017-06-19 | 2017-06-19 |  | 刘晓安 | 8h |
| 83 | 3.3.5.4 | 3.3.5.4 门开关音效 | manual | 1d | 2017-06-19 | 2017-06-19 |  | 刘晓安 | 8h |
| 84 | 3.3.5.5 | 3.3.5.5 生成怪物音效 | manual | 1d | 2017-06-20 | 2017-06-20 |  | 刘晓安 | 8h |
| 85 | 3.3.5.6 | 3.3.5.6 战斗BGM | manual | 1d | 2017-06-20 | 2017-06-20 |  | 刘晓安 | 8h |
| 86 | 3.3.5.7 | 3.3.5.7 非战斗BGM | manual | 1d | 2017-06-20 | 2017-06-20 |  | 刘晓安 | 8h |

| ID | WBS | Task | Type | Duration | Start | Finish | Total slack | Resources | Work |
| --- | --- | --- | --- | --- | --- | --- | --- | --- | --- |
| 87 | 3.3.6 | **3.3.6 交互设备动作设计** |  | 2d | 2017-06-21 | 2017-06-22 | 0d | 刘晓安 | 32h |
| 88 | 3.3.6.1 | 3.3.6.1 交互设备动作设计1 | manual | 1d | 2017-06-21 | 2017-06-21 |  | 刘晓安 | 8h |
| 89 | 3.3.6.2 | 3.3.6.2 交互设备动作设计2 | manual | 1d | 2017-06-22 | 2017-06-22 |  | 刘晓安 | 8h |
| 90 | 3.4 | **3.4 完成编码** |  | 21d | 2017-06-08 | 2017-07-06 | 0d |  | 304h |
| 91 | 3.4.1 | 3.4.1 熟悉panda3D引擎(模型未初步建好阶段) | manual | 8d | 2017-06-08 | 2017-06-17 |  | 全体编码人员 | 64h |
| 92 | 3.4.2 | **3.4.2 导入模型** |  | 2d | 2017-06-19 | 2017-06-20 | 0d |  | 16h |
| 93 | 3.4.2.1 | 3.4.2.1 导入游戏场景模型 | manual | 1d | 2017-06-19 | 2017-06-19 |  | 宋丹 | 8h |
| 94 | 3.4.2.2 | 3.4.2.2 导入角色模型(主角及怪物) | manual | 1d | 2017-06-20 | 2017-06-20 |  | 宋丹 | 8h |
| 95 | 3.4.3 | **3.4.3 角色在房间内移动 实现物理碰撞** |  | 3d | 2017-06-21 | 2017-06-23 | 0d |  | 24h |
| 96 | 3.4.3.1 | 3.4.3.1 角色在房间内移动 | manual | 1d | 2017-06-21 | 2017-06-21 |  | 苏时元 | 8h |
| 97 | 3.4.3.2 | 3.4.3.2 实现物理碰撞接口1 | manual | 1d | 2017-06-22 | 2017-06-22 |  | 苏时元 | 8h |
| 98 | 3.4.3.3 | 3.4.3.3 实现物理碰撞接口2 | manual | 1d | 2017-06-23 | 2017-06-23 |  | 苏时元 | 8h |
| 99 | 3.4.4 | **3.4.4 实现主角使用技能接口** |  | 2d | 2017-06-24 | 2017-06-27 | 0d |  | 24h |
| 100 | 3.4.4.1 | 3.4.4.1 实现主角使用技能接口1 | manual | 1d | 2017-06-24 | 2017-06-24 |  | 甘寿枢 | 8h |
| 101 | 3.4.4.2 | 3.4.4.2 实现主角使用技能接口2 | manual | 1d | 2017-06-26 | 2017-06-26 |  | 甘寿枢 | 8h |
| 102 | 3.4.4.3 | 3.4.4.3 实现主角使用技能接口3 | manual | 1d | 2017-06-27 | 2017-06-27 |  | 甘寿枢 | 8h |
| 103 | 3.4.5 | **3.4.5 实现怪物使用技能接口** |  | 2d | 2017-06-24 | 2017-06-27 | 0d |  | 24h |
| 104 | 3.4.5.1 | 3.4.5.1 实现怪物使用技能接口1 | manual | 1d | 2017-06-24 | 2017-06-24 |  | 陈红宇 | 8h |
| 105 | 3.4.5.2 | 3.4.5.2 实现怪物使用技能接口2 | manual | 1d | 2017-06-26 | 2017-06-26 |  | 陈红宇 | 8h |
| 106 | 3.4.5.3 | 3.4.5.3 实现怪物使用技能接口3 | manual | 1d | 2017-06-27 | 2017-06-27 |  | 陈红宇 | 8h |
| 107 | 3.4.6 | **3.4.6 实现道具掉落 增加主角属性功能接口** |  | 1d | 2017-06-24 | 2017-06-26 | 0d |  | 16h |
| 108 | 3.4.6.1 | 3.4.6.1 实现道具掉落接口 | manual | 1d | 2017-06-24 | 2017-06-24 |  | 苏时元 | 8h |
| 109 | 3.4.6.2 | 3.4.6.2 实现增加主角属性功能接口 | manual | 1d | 2017-06-26 | 2017-06-26 |  | 苏时元 | 8h |
| 110 | 3.4.7 | **3.4.7 相关数据结构的设计** |  | 4d | 2017-06-26 | 2017-06-29 | 0d |  | 32h |
| 111 | 3.4.7.1 | 3.4.7.1 主角的属性设计 | manual | 1d | 2017-06-26 | 2017-06-26 |  | 宋丹 | 8h |
| 112 | 3.4.7.2 | 3.4.7.2 怪物的属性设计 | manual | 1d | 2017-06-27 | 2017-06-27 |  | 宋丹 | 8h |
| 113 | 3.4.7.3 | 3.4.7.3 随机生成房间和怪物的属性设计 | manual | 1d | 2017-06-28 | 2017-06-28 |  | 宋丹 | 8h |
| 114 | 3.4.7.4 | 3.4.7.4 游戏进度的属性设计 | manual | 1d | 2017-06-29 | 2017-06-29 |  | 宋丹 | 8h |
| 115 | 3.4.8 | 3.4.7 实现怪物和房间随机生成 | manual | 1d | 2017-06-27 | 2017-06-27 |  | 苏时元 | 8h |

| ID | WBS | Task | Type | Duration | Start | Finish | Total slack | Resources | Work |
| --- | --- | --- | --- | --- | --- | --- | --- | --- | --- |
| 116 | 3.4.9 | **3.4.8 实现主角与怪物战斗业务逻辑** |  | 3d | 2017-06-27 | 2017-06-29 | 0d |  | 24h |
| 117 | 3.4.9.1 | 3.4.8.1 实现主角与怪物战斗业务逻辑1 | manual | 1d | 2017-06-27 | 2017-06-27 |  | 陈红宇 | 8h |
| 118 | 3.4.9.2 | 3.4.8.2 实现主角与怪物战斗业务逻辑2 | manual | 1d | 2017-06-28 | 2017-06-28 |  | 陈红宇 | 8h |
| 119 | 3.4.9.3 | 3.4.8.3 实现主角与怪物战斗业务逻辑3 | manual | 1d | 2017-06-29 | 2017-06-29 |  | 陈红宇 | 8h |
| 120 | 3.4.10 | **3.4.9 实现BOSS关卡业务逻辑** |  | 3d | 2017-06-27 | 2017-06-29 | 0d |  | 24h |
| 121 | 3.4.10.1 | 3.4.9.1 实现BOSS关卡业务逻辑1 | manual | 1d | 2017-06-27 | 2017-06-27 |  | 甘寿枢 | 8h |
| 122 | 3.4.10.2 | 3.4.9.2 实现BOSS关卡业务逻辑2 | manual | 1d | 2017-06-28 | 2017-06-28 |  | 甘寿枢 | 8h |
| 123 | 3.4.10.3 | 3.4.9.3 实现BOSS关卡业务逻辑3 | manual | 1d | 2017-06-29 | 2017-06-29 |  | 甘寿枢 | 8h |
| 124 | 3.4.11 | 3.4.10 实现菜单栏 | manual | 1d | 2017-06-30 | 2017-06-30 |  | 宋丹 | 8h |
| 125 | 3.4.12 | 3.4.11 实现保存，载入等功能 | manual | 1d | 2017-07-01 | 2017-07-01 |  | 宋丹 | 8h |
| 126 | 3.4.13 | **3.4.12 实现桌面设备在游戏中使用** |  | 4d | 2017-07-03 | 2017-07-06 | 0d |  | 32h |
| 127 | 3.4.13.1 | 3.4.12.1 学习桌面设备相关接口 | manual | 1d | 2017-07-03 | 2017-07-03 |  | 张志斌 | 8h |
| 128 | 3.4.13.2 | 3.4.12.2 将桌面设备集成进系统 | manual | 1d | 2017-07-04 | 2017-07-04 |  | 张志斌 | 8h |
| 129 | 3.4.13.3 | **3.4.12.3 将桌面设备用于游戏输入** |  | 2d | 2017-07-05 | 2017-07-06 | 0d |  | 16h |
| 130 | 3.4.13.3.1 | 3.4.12.3.1 将桌面设备用于游戏输入1 | manual | 1d | 2017-07-05 | 2017-07-05 |  | 张志斌 | 8h |
| 131 | 3.4.13.3.2 | 3.4.12.3.2 将桌面设备用于游戏输入2 | manual | 1d | 2017-07-06 | 2017-07-06 |  | 张志斌 | 8h |
| 132 | 3.5 | **3.5 完成集成测试** |  | 3d | 2017-07-10 | 2017-07-12 | 0d |  | 24h |
| 133 | 3.5.1 | 3.5.1 完成集成测试1 | manual | 1d | 2017-07-10 | 2017-07-10 |  | 张志斌 | 8h |
| 134 | 3.5.2 | 3.5.2 完成集成测试2 | manual | 1d | 2017-07-11 | 2017-07-11 |  | 张志斌 | 8h |
| 135 | 3.5.3 | 3.5.3 完成集成测试3 | manual | 1d | 2017-07-12 | 2017-07-12 |  | 张志斌 | 8h |
| 136 | 4 | **4 收尾** |  | 1d | 2017-07-14 | 2017-07-15 | 0d |  | 24h |
| 137 | 4.1 | 4.1 项目交付 | manual | 1d | 2017-07-14 | 2017-07-14 |  | 林旭南 | 8h |
| 138 | 4.2 | 4.2 小组和个人总结 | manual | 1d | 2017-07-14 | 2017-07-14 |  | 全体人员 | 8h |
| 139 | 4.3 | 4.3 项目答辩 | manual | 1d | 2017-07-15 | 2017-07-15 |  | 全体人员 | 8h |
